# caMOD 2.2

Schedule from MS Project, 2008-02-04 to 2008-08-28.
SAIC

## Calendars

- Standard: Mon-Fri 08:00-12:00, 13:00-17:00; Sat-Sun off.

## Resources

| Resource |
| --- |
| GuruswamiS |
| NCICB |
| Anand |
| Ulli |
| QA |
| Sima |
| DBA |
| 2nd Resource |
| Sima |
| Srini |
| Grid Resource |
| App Support |
| Systems |
| Jill |
| Nick |

## Schedule

| ID | WBS | Task | Type | Duration | Start | Finish | Predecessors | Total slack | Free slack | Constraint | Resources | Work |
| --- | --- | --- | --- | --- | --- | --- | --- | --- | --- | --- | --- | --- |
| 1 | 1 | **caMOD 2.5 Release** |  | 149d | 2008-02-04 | 2008-08-28 |  | 0d |  |  |  | 1816h |
| 2 | 1.1 | **Inception Phase** |  | 78d | 2008-02-04 | 2008-05-21 |  | 61d |  |  |  | 192h |
| 3 | 1.1.1 | Use Case and Design Doc (caBIG template) |  | 2w | 2008-02-04 | 2008-02-15 |  | 115d | 0d | start no earlier than 2008-02-04 | Nick | 80h |
| 4 | 1.1.2 | Review use cases / design with the "Review Board" |  | 6d | 2008-02-18 | 2008-02-25 | 3 | 98d | 0d |  | Sima | 8h |
| 5 | 1.1.3 | Write a design document for gridified caMOD |  | 10d | 2008-05-05 | 2008-05-16 |  | 0d |  | start no earlier than 2008-05-05 | Sima | 80h |
| 6 | 1.1.4 | Submit the gridified design document to ARB |  | 3d | 2008-05-19 | 2008-05-21 | 5 | 0d |  |  | Sima | 24h |
| 7 | 1.2 | Milestone: Completed Design Document | milestone | 0d | 2008-02-25 | 2008-02-25 | 4 | 115d | 0d |  | Anand |  |
| 8 | 1.3 | **Elaboration Phase** |  | 37d | 2008-02-04 | 2008-03-25 |  | 112d |  |  |  | 232h |
| 9 | 1.3.1 | Create valute domains for caDSR |  | 18d | 2008-02-04 | 2008-02-27 |  | 109d | 0d | start no earlier than 2008-02-04 | Ulli | 80h |
| 10 | 1.3.2 | Incorporate changes to the Object Model |  | 2d | 2008-02-28 | 2008-02-29 | 9 | 109d | 0d |  | Ulli | 16h |
| 11 | 1.3.3 | Make code changes due to Object Model changes |  | 5d | 2008-03-03 | 2008-03-07 | 10 | 107d | 0d |  | Nick | 40h |
| 12 | 1.3.4 | Milestone: Soft Freeze Object Model | milestone | 0d | 2008-03-07 | 2008-03-07 | 11 | 107d | 0d |  | Nick |  |
| 13 | 1.3.5 | Round Trip, Import XMI into EA |  | 2d | 2008-03-10 | 2008-03-11 | 12 | 107d | 0d |  | Ulli | 16h |
| 14 | 1.3.6 | Register Model in caDSR |  | 10d | 2008-03-12 | 2008-03-25 | 13 | 107d | 0d |  | Ulli | 80h |
| 15 | 1.4 | Milestone: Model Registered in CADSR | milestone | 0d | 2008-03-25 | 2008-03-25 | 14 | 107d |  | start no earlier than 2008-02-04 |  |  |
| 16 | 1.5 | **iteration 1:** |  | 134d | 2008-02-25 | 2008-08-28 |  | 0d |  |  |  | 1392h |
| 17 | 1.5.1 | **Infrastructure Upgrade** |  | 30d | 2008-02-25 | 2008-04-04 |  | 44d | 0d |  |  | 240h |
| 18 | 1.5.1.1 | 10958 - Take existing test scripts and run them in Selenium and CruiseControl |  | 10d | 2008-02-25 | 2008-03-07 |  | 51d | 0d | start no earlier than 2008-02-25 | Nick | 80h |
| 19 | 1.5.1.2 | 10957 - LexBig Prototype: Investiate and demo connection to Lexbig Vocabulary System / Architecture |  | 20d | 2008-03-10 | 2008-04-04 | 18 | 51d |  |  | Nick | 160h |
| 20 | 1.5.2 | **Enhancements and Misc bugs** |  | 31d | 2008-04-07 | 2008-05-19 |  | 44d |  |  |  | 248h |
| 21 | 1.5.2.1 | 5097 - submitting microarray data that are stored in other applications than caArray |  | 3d | 2008-04-07 | 2008-04-09 | 17 | 51d | 0d | start no earlier than 2008-03-10 | Nick | 24h |
| 22 | 1.5.2.2 | 5172 - Do not delete EnvironmentalFactor objects - instead reuse and leave in DB |  | 5d | 2008-04-10 | 2008-04-16 | 21 | 51d | 0d |  | Nick | 40h |
| 23 | 1.5.2.3 | 11013 - Use improved PubMed fetch script on publication submission page |  | 5d | 2008-04-17 | 2008-04-23 | 22 | 51d | 0d |  | Nick | 40h |
| 24 | 1.5.2.4 | 5200 - Duplicate Model - status of duplicated model should be default be incomplete |  | 3d | 2008-04-24 | 2008-04-28 | 23 | 51d | 0d |  | Nick | 24h |
| 25 | 1.5.2.5 | 8400 - Duplication does not work for some fields |  | 5d | 2008-04-29 | 2008-05-05 | 24 | 51d | 0d |  | Nick | 40h |
| 26 | 1.5.2.6 | 11007 - Add search for PMID to advanced search page |  | 3d | 2008-05-06 | 2008-05-08 | 25 | 51d |  |  | Nick | 24h |
| 27 | 1.5.2.7 | 12042 - Save query function broken - Fix |  | 4d | 2008-05-09 | 2008-05-14 | 26 | 42d | 0d |  | Nick | 32h |
| 28 | 1.5.2.8 | 9127 - Customize publication pages for rat to allow submissio & display of RGD references |  | 2d | 2008-05-15 | 2008-05-16 | 27 | 44d | 0d |  | Nick | 16h |
| 29 | 1.5.2.9 | 12216 - Release date selection not maintaining value |  | 1d | 2008-05-19 | 2008-05-19 | 28 | 44d |  |  | Nick | 8h |

| ID | WBS | Task | Type | Duration | Start | Finish | Predecessors | Total slack | Free slack | Constraint | Resources | Work |
| --- | --- | --- | --- | --- | --- | --- | --- | --- | --- | --- | --- | --- |
| 30 | 1.5.3 | **Remote API / Grid** |  | 42d | 2008-05-22 | 2008-07-18 |  | 0d |  |  |  | 336h |
| 31 | 1.5.3.1 | Make code changes due to Object Model changes |  | 5d | 2008-05-22 | 2008-05-28 | 6 | 0d |  | start no earlier than 2008-05-05 | Sima | 40h |
| 32 | 1.5.3.2 | Milestone: Soft Freeze Object Model |  | 2d | 2008-05-29 | 2008-05-30 | 31 | 0d |  |  | Sima | 16h |
| 33 | 1.5.3.3 | Leverage caCORE 3.2 for remote API |  | 1w | 2008-06-02 | 2008-06-06 | 32 | 0d |  | start no earlier than 2008-05-05 | Sima | 40h |
| 34 | 1.5.3.4 | Make caMod available in the grid (production) |  | 5w | 2008-06-09 | 2008-07-11 | 33 | 0d |  |  | Sima | 200h |
| 35 | 1.5.3.5 | Make only edited-approved models available through API |  | 1w | 2008-07-14 | 2008-07-18 | 34 | 0d |  |  | Sima | 40h |
| 36 | 1.5.4 | **Testing** |  | 133d | 2008-02-26 | 2008-08-28 |  | 0d |  |  |  | 568h |
| 37 | 1.5.4.1 | Deploy iteration on DEV Server |  | 2d | 2008-07-21 | 2008-07-22 | 20, 30 | 0d |  |  | Sima | 16h |
| 38 | 1.5.4.2 | Test on DEV tier |  | 2w | 2008-07-23 | 2008-08-05 | 37 | 0d |  |  | Ulli; Sima | 160h |
| 39 | 1.5.4.3 | **Transition Phase** |  | 133d | 2008-02-26 | 2008-08-28 |  | 0d |  |  |  | 312h |
| 40 | 1.5.4.3.1 | **QA** |  | 10d | 2008-02-26 | 2008-03-10 | 7 | 123d |  |  | QA | 160h |
| 41 | 1.5.4.3.1.1 | Finalize Testplan |  | 1w | 2008-02-26 | 2008-03-03 | 7 | 123d | 0d |  | QA | 40h |
| 42 | 1.5.4.3.1.2 | Finalize Test Cases |  | 1w | 2008-03-04 | 2008-03-10 | 41 | 123d |  |  | QA | 40h |
| 43 | 1.5.4.3.2 | **Deploy** |  | 17d | 2008-08-06 | 2008-08-28 |  | 0d |  |  |  | 152h |
| 44 | 1.5.4.3.2.1 | **QA Server Deployment** |  | 10d | 2008-08-06 | 2008-08-19 | 38 | 0d |  |  |  | 80h |
| 45 | 1.5.4.3.2.1.1 | QA Testing |  | 2w | 2008-08-06 | 2008-08-19 |  | 0d |  |  | QA | 80h |
| 46 | 1.5.4.3.2.2 | **Staging Server Deployment** |  | 5d | 2008-08-20 | 2008-08-26 | 45 | 0d |  |  |  | 40h |
| 47 | 1.5.4.3.2.2.1 | Staging Testing |  | 1w | 2008-08-20 | 2008-08-26 |  | 0d |  |  | Ulli | 40h |
| 48 | 1.5.4.3.2.3 | **Production Server Deployment** |  | 2d | 2008-08-27 | 2008-08-28 | 47 | 0d |  |  | Sima | 32h |
| 49 | 1.5.4.3.2.3.1 | Production Verification |  | 2d | 2008-08-27 | 2008-08-28 |  | 0d |  |  | Ulli | 16h |
| 50 | 1.5.4.4 | **Documentation** |  | 10d | 2008-07-21 | 2008-08-01 | 30 | 19d |  |  |  | 80h |
| 51 | 1.5.4.4.1 | Document How to Connect to caMOD |  | 1w | 2008-07-21 | 2008-07-25 |  | 19d | 0d |  | Sima | 40h |
| 52 | 1.5.4.4.2 | Documentation Edit by Documentation Team |  | 5d | 2008-07-28 | 2008-08-01 | 51 | 19d |  |  | Jill | 40h |
| 53 | 1.5.4.5 | caMOD 2.5 - Closeout | milestone | 0d | 2008-08-28 | 2008-08-28 | 49 | 0d |  |  |  |  |
